# Kinesic

Schedule from MS Project, 2018-06-24 to 2019-01-11, A marks actual dates.
Timeline
Kinesic GmbH

## Calendars

- Standard: Mon-Sun 08:00-12:00, 13:00-17:00.

## Resources

| Resource |
| --- |
| Diego |
| Jorge |
| Lalo |
| Gabo |
| Eduardo |
| Matthias |
| All |

## Schedule

| ID | WBS | Task | Type | Duration | Start | Finish | Predecessors | Complete | Remaining | Total slack | Resources | Work | Actual work |
| --- | --- | --- | --- | --- | --- | --- | --- | --- | --- | --- | --- | --- | --- |
| 1 | 1 | **Kinesic: Phase 1** |  | 202d | 2018-06-24 A | 2019-01-11 |  | 41% | 118.66d | 0d | All | 52670h | 15593.2h |
| 2 | 1.1 | **Milestones** |  | 168d | 2018-06-24 A | 2018-12-09 |  |  | 168d | 0d | All | 1344h |  |
| 3 | 1.1.1 | Phase 1 Kick-off | milestone, manual | 0d | 2018-06-24 A | 2018-06-24 A |  | 100% |  |  | All |  |  |
| 4 | 1.1.2 | Delivery 1 | milestone, manual | 0d | 2018-09-02 A | 2018-09-02 A |  | 100% |  |  | All |  |  |
| 5 | 1.1.3 | Delivery 2 | milestone, manual | 0d | 2018-10-07 | 2018-10-07 |  |  |  |  | All |  |  |
| 6 | 1.1.4 | Delivery 3 | milestone, manual | 0d | 2018-11-11 | 2018-11-11 |  |  |  |  | All |  |  |
| 7 | 1.1.5 | Phase 1 Kick-out | milestone, manual | 0d | 2018-12-09 | 2018-12-09 |  |  |  |  | All |  |  |
| 8 | 1.2 | **Project planing** |  | 57d | 2018-06-24 A | 2018-08-19 |  | 90% | 5.55d | 0d | Eduardo; Jorge | 6232h | 3632h |
| 9 | 1.2.1 | **Project Management** |  | 57d | 2018-06-24 A | 2018-08-19 |  | 99% | 0d | 0d | Eduardo; Jorge | 1944h | 1608h |
| 10 | 1.2.1.1 | Define project management tool | manual | 9d | 2018-07-28 A | 2018-08-05 A |  | 100% |  |  | All | 72h | 72h |
| 11 | 1.2.1.2 | Set project deadlines | manual | 43d | 2018-06-24 A | 2018-08-05 A |  | 100% |  |  | All | 344h | 344h |
| 12 | 1.2.1.3 | Describe project tasks | manual | 36d | 2018-06-24 A | 2018-07-29 A |  | 100% |  |  | All | 288h | 288h |
| 13 | 1.2.1.4 | Create project timeline in Excel | manual | 7d | 2018-07-23 A | 2018-07-29 A | 10, 11, 12 | 100% |  |  | Eduardo | 56h | 56h |
| 14 | 1.2.1.5 | Integrate project tasks in PM tool | manual | 14d | 2018-07-30 A | 2018-08-12 A | 13 | 100% |  |  | Eduardo; Jorge | 224h | 224h |
| 15 | 1.2.1.6 | Create project timeline in PM tool | manual | 21d | 2018-07-30 A | 2018-08-19 A | 14 | 100% |  |  | Eduardo; Jorge | 336h | 336h |
| 16 | 1.2.2 | **Finance** |  | 43d | 2018-06-24 A | 2018-08-05 |  | 99% | 0d | 0d | Jorge | 712h | 376h |
| 17 | 1.2.2.1 | Agree on available budget for phase 1 | manual | 1d | 2018-06-24 A | 2018-06-24 A |  | 100% |  |  | All | 8h | 8h |
| 18 | 1.2.2.2 | Identify options to make money transfer | manual | 16d | 2018-06-30 A | 2018-07-15 A |  | 100% |  |  | Diego | 128h | 128h |
| 19 | 1.2.2.3 | Decide on money transfer method | manual | 1d | 2018-07-16 A | 2018-07-16 A | 18 | 100% |  |  | All | 8h | 8h |
| 20 | 1.2.2.4 | Transfer initial part of budget | manual | 6d | 2018-07-17 A | 2018-07-22 A | 19 | 100% |  |  | Eduardo | 48h | 48h |
| 21 | 1.2.2.5 | Create accounting list | manual | 22d | 2018-07-15 A | 2018-08-05 A |  | 100% |  |  | Diego | 176h | 176h |
| 22 | 1.2.3 | **State of the Art** |  | 50d | 2018-06-24 A | 2018-08-12 |  | 70% | 15.05d | 0d | Eduardo; Jorge | 1984h | 1064h |
| 23 | 1.2.3.1 | Identify main competitors | manual | 50d | 2018-06-24 A | 2018-08-12 |  | 50% | 25d |  | Eduardo; Jorge | 800h | 400h |
| 24 | 1.2.3.2 | Create company profile of main competitors | manual | 15d | 2018-07-29 A | 2018-08-12 |  | 50% | 7.5d |  | Eduardo; Jorge | 240h | 120h |
| 25 | 1.2.3.3 | Research on MCUs or platforms for prototyping | manual | 43d | 2018-06-24 A | 2018-08-05 A |  | 100% |  |  | Gabo | 344h | 344h |

| ID | WBS | Task | Type | Duration | Start | Finish | Predecessors | Complete | Remaining | Total slack | Resources | Work | Actual work |
| --- | --- | --- | --- | --- | --- | --- | --- | --- | --- | --- | --- | --- | --- |
| 26 | 1.2.4 | **Electronic Components** |  | 36d | 2018-07-15 A | 2018-08-19 |  | 99% | 0d | 0d | Lalo | 688h | 576h |
| 27 | 1.2.4.1 | Create list of components necessary to start | manual | 22d | 2018-07-15 A | 2018-08-05 A |  | 100% |  |  | All | 176h | 176h |
| 28 | 1.2.4.2 | Clarify which components are available at Tec | manual | 7d | 2018-08-06 A | 2018-08-12 A | 27 | 100% |  |  | All | 56h | 56h |
| 29 | 1.2.4.3 | Buy missing components | manual | 7d | 2018-08-13 A | 2018-08-19 A | 28 | 100% |  |  | All | 56h | 56h |
| 30 | 1.2.4.4 | Define tool for electronic design | manual | 14d | 2018-07-30 A | 2018-08-12 A |  | 100% |  |  | Lalo | 112h | 112h |
| 31 | 1.3 | **Analog electronics** |  | 126d | 2018-08-06 A | 2018-12-09 |  | 57% | 54.1d | 0d | Lalo | 7568h | 2998.4h |
| 32 | 1.3.1 | **ECG** |  | 56d | 2018-08-06 A | 2018-09-30 |  | 65% | 19.68d | 0d | Lalo | 2520h | 1400h |
| 33 | 1.3.1.1 | **Preamplification** |  | 45d | 2018-08-06 A | 2018-09-19 |  | 82% | 8.18d | 0d |  | 616h | 504h |
| 34 | 1.3.1.1.1 | Identify gain ranges for pre-amplification | manual | 14d | 2018-08-06 A | 2018-08-19 A |  | 100% |  |  | Lalo | 112h | 112h |
| 35 | 1.3.1.1.2 | Define instrumental amplifier to be used | manual | 7d | 2018-08-06 A | 2018-08-12 A | 34 | 100% |  |  | Lalo | 56h | 56h |
| 36 | 1.3.1.1.3 | Calculate needed ranges of digital potentiometers | manual | 14d | 2018-08-06 A | 2018-08-19 A | 35 | 100% |  |  | Lalo | 112h | 112h |
| 37 | 1.3.1.1.4 | Identify and buy digital potentiomet. and InsAmp. | manual | 14d | 2018-08-06 A | 2018-08-19 A | 36 | 100% |  |  | Lalo | 112h | 112h |
| 38 | 1.3.1.1.5 | Build preamplification circuit in protoboard | manual | 14d | 2018-08-06 A | 2018-08-19 A | 37 | 100% |  |  | Lalo | 112h | 112h |
| 39 | 1.3.1.1.6 | Test preamplification circuit | manual | 7d | 2018-09-13 | 2018-09-19 | 38 |  |  |  | Lalo | 56h |  |
| 40 | 1.3.1.1.7 | Define final potentiomet. and InsAmp. to be used | manual | 7d | 2018-09-13 | 2018-09-19 | 39 |  |  |  | Lalo | 56h |  |
| 41 | 1.3.1.2 | **Multiplexer** |  | 30d | 2018-09-01 A | 2018-09-30 |  | 53% | 14.19d | 0d |  | 592h | 312h |
| 42 | 1.3.1.2.1 | Research types of analog multiplexers | manual | 13d | 2018-09-01 A | 2018-09-13 A |  | 100% |  |  | Lalo | 104h | 104h |
| 43 | 1.3.1.2.2 | Identify and order 3 analog multiplexers | manual | 13d | 2018-09-03 A | 2018-09-15 A | 42 | 100% |  |  | Lalo | 104h | 104h |
| 44 | 1.3.1.2.3 | Receive multiplexer | manual | 13d | 2018-09-05 A | 2018-09-17 A | 43 | 100% |  |  | Lalo | 104h | 104h |
| 45 | 1.3.1.2.4 | Build multiplexer + preamplification in protoboard | manual | 15d | 2018-09-08 | 2018-09-22 | 44 |  |  |  | Lalo | 120h |  |
| 46 | 1.3.1.2.5 | Test signal quality with multiplexer | manual | 6d | 2018-09-18 | 2018-09-23 | 45 |  |  |  | Lalo | 48h |  |
| 47 | 1.3.1.2.6 | Verify maximum signal frequency with multiplexer | manual | 6d | 2018-09-18 | 2018-09-23 | 46 |  |  |  | Lalo | 48h |  |
| 48 | 1.3.1.2.7 | Define multiplexer to be used | manual | 8d | 2018-09-23 | 2018-09-30 | 47 |  |  |  | Lalo | 64h |  |
| 49 | 1.3.1.3 | **Filters** |  | 44d | 2018-08-13 A | 2018-09-25 |  | 67% | 14.67d | 0d |  | 504h | 336h |
| 50 | 1.3.1.3.1 | Identify frequency ranges for biosignals | manual | 14d | 2018-08-13 A | 2018-08-26 A |  | 100% |  |  | Lalo | 112h | 112h |
| 51 | 1.3.1.3.2 | Design cut-band filter at 60Hz | manual | 14d | 2018-08-13 A | 2018-08-26 A | 50 | 100% |  |  | Lalo | 112h | 112h |
| 52 | 1.3.1.3.3 | Identify and buy digital pot. for all frequency ranges | manual | 14d | 2018-08-20 A | 2018-09-02 A | 51 | 100% |  |  | Lalo | 112h | 112h |
| 53 | 1.3.1.3.4 | Build filter + multiplexer + preamp. in protoboard | manual | 15d | 2018-09-08 | 2018-09-22 | 52 |  |  |  | Lalo | 120h |  |
| 54 | 1.3.1.3.5 | Test filters | manual | 4d | 2018-09-22 | 2018-09-25 | 53 |  |  |  | Lalo | 32h |  |
| 55 | 1.3.1.3.6 | Define components for filter circuit | manual | 2d | 2018-09-24 | 2018-09-25 | 54 |  |  |  | Lalo | 16h |  |

Notes:
- 30: 16/09/2018: Eagle
- 35: 12/08/2018: AD620

| ID | WBS | Task | Type | Duration | Start | Finish | Predecessors | Complete | Remaining | Total slack | Resources | Work | Actual work |
| --- | --- | --- | --- | --- | --- | --- | --- | --- | --- | --- | --- | --- | --- |
| 56 | 1.3.1.4 | **Final Amplification** |  | 21d | 2018-09-10 A | 2018-09-30 |  | 53% | 9.8d | 0d |  | 360h | 192h |
| 57 | 1.3.1.4.1 | Identify gain ranges for final amplification | manual | 7d | 2018-09-10 A | 2018-09-16 A |  | 100% |  |  | Lalo | 56h | 56h |
| 58 | 1.3.1.4.2 | Calculate needed ranges of digital potentiometers | manual | 7d | 2018-09-10 A | 2018-09-16 A | 57 | 100% |  |  | Lalo | 56h | 56h |
| 59 | 1.3.1.4.3 | Identify and buy digital potentiometers | manual | 10d | 2018-09-10 A | 2018-09-19 A | 58 | 100% |  |  | Lalo | 80h | 80h |
| 60 | 1.3.1.4.4 | Build amp+filter+multiplexer+preamp in protoboard | manual | 7d | 2018-09-24 | 2018-09-30 | 59 |  |  |  | Lalo | 56h |  |
| 61 | 1.3.1.4.5 | Test amplification circuit | manual | 7d | 2018-09-24 | 2018-09-30 | 60 |  |  |  | Lalo | 56h |  |
| 62 | 1.3.1.4.6 | Define digital potentiometers to be used | manual | 7d | 2018-09-24 | 2018-09-30 | 61 |  |  |  | Lalo | 56h |  |
| 63 | 1.3.2 | **General purpose channels** |  | 63d | 2018-08-06 A | 2018-10-07 |  | 78% | 13.61d | 0d | Lalo | 2400h | 1542.4h |
| 64 | 1.3.2.1 | **Preamplification** |  | 42d | 2018-08-06 A | 2018-09-16 |  | 96% | 1.7d | 0d |  | 592h | 568h |
| 65 | 1.3.2.1.1 | Identify gain ranges for pre-amplification | manual | 14d | 2018-08-06 A | 2018-08-19 A |  | 100% |  |  | Lalo | 112h | 112h |
| 66 | 1.3.2.1.2 | Define instrumental amplifier to be used 12/08/2018: AD620 | manual | 7d | 2018-08-06 A | 2018-08-12 A | 65 | 100% |  |  | Lalo | 56h | 56h |
| 67 | 1.3.2.1.3 | Calculate needed ranges of digital potentiometers | manual | 14d | 2018-08-06 A | 2018-08-19 A | 66 | 100% |  |  | Lalo | 112h | 112h |
| 68 | 1.3.2.1.4 | Identify and buy digital potentiomet. and InsAmp. | manual | 14d | 2018-08-06 A | 2018-08-19 A | 67 | 100% |  |  | Lalo | 112h | 112h |
| 69 | 1.3.2.1.5 | Build preamplification circuit in protoboard | manual | 14d | 2018-08-06 A | 2018-08-19 A | 68 | 100% |  |  | Lalo | 112h | 112h |
| 70 | 1.3.2.1.6 | Test preamplification circuit | manual | 8d | 2018-09-08 A | 2018-09-15 A | 69 | 100% |  |  | Lalo | 64h | 64h |
| 71 | 1.3.2.1.7 | Define final potentiomet. and InsAmp. to be used | manual | 3d | 2018-09-14 | 2018-09-16 | 70 |  |  |  | Lalo | 24h |  |
| 72 | 1.3.2.2 | **Filters** |  | 56d | 2018-08-13 A | 2018-10-07 |  | 97% | 1.66d | 0d |  | 808h | 784h |
| 73 | 1.3.2.2.1 | Identify frequency ranges for biosignals | manual | 14d | 2018-08-13 A | 2018-08-26 A |  | 100% |  |  | Lalo | 112h | 112h |
| 74 | 1.3.2.2.2 | Calculate ranges of digital pot. for low-pass filters | milestone, manual | 0d | 2018-09-12 A | 2018-09-12 A | 73 | 100% |  |  | Lalo |  |  |
| 75 | 1.3.2.2.3 | Calculate ranges of digital pot. for high-pass filters | manual | 14d | 2018-08-13 A | 2018-08-26 A | 74 | 100% |  |  | Lalo | 112h | 112h |
| 76 | 1.3.2.2.4 | Design cut-band filter at 60Hz | manual | 14d | 2018-08-13 A | 2018-08-26 A | 45 | 100% |  |  | Lalo | 112h | 112h |
| 77 | 1.3.2.2.5 | Identify and buy digital pot. for all frequency ranges | manual | 19d | 2018-08-28 A | 2018-09-15 A | 46 | 100% |  |  | Lalo | 152h | 152h |
| 78 | 1.3.2.2.6 | Build filter + multiplexer + preamp. in protoboard | manual | 20d | 2018-09-16 A | 2018-10-05 A | 47 | 100% |  |  | Lalo | 160h | 160h |
| 79 | 1.3.2.2.7 | Test filters with different frequency ranges | manual | 17d | 2018-09-20 A | 2018-10-06 A | 48 | 100% |  |  | Lalo | 136h | 136h |
| 80 | 1.3.2.2.8 | Define components for filter circuit | manual | 3d | 2018-10-05 | 2018-10-07 | 49 |  |  |  | Lalo | 24h |  |

| ID | WBS | Task | Type | Duration | Start | Finish | Predecessors | Complete | Remaining | Total slack | Resources | Work | Actual work |
| --- | --- | --- | --- | --- | --- | --- | --- | --- | --- | --- | --- | --- | --- |
| 81 | 1.3.2.3 | **Final Amplification** |  | 27d | 2018-09-10 A | 2018-10-06 |  | 27% | 19.68d | 0d |  | 496h | 134.4h |
| 82 | 1.3.2.3.1 | Identify gain ranges for final amplification | manual | 7d | 2018-09-10 A | 2018-09-16 A |  | 100% |  |  | Lalo | 56h | 56h |
| 83 | 1.3.2.3.2 | Calculate needed ranges of digital potentiometers | manual | 7d | 2018-09-10 A | 2018-09-16 A | 82 | 100% |  |  | Lalo | 56h | 56h |
| 84 | 1.3.2.3.3 | Identify and buy digital potentiometers | manual | 14d | 2018-09-10 A | 2018-09-23 | 83 | 20% | 11.2d |  | Lalo | 112h | 22.4h |
| 85 | 1.3.2.3.4 | Build amp+filter+multiplexer+preamp in protoboard | manual | 9d | 2018-09-24 | 2018-10-02 | 84 |  |  |  | Lalo | 72h |  |
| 86 | 1.3.2.3.5 | Test amplification circuit | manual | 12d | 2018-09-24 | 2018-10-05 | 85 |  |  |  | Lalo | 96h |  |
| 87 | 1.3.2.3.6 | Define digital potentiometers to be used | manual | 13d | 2018-09-24 | 2018-10-06 | 86 |  |  |  | Lalo | 104h |  |
| 88 | 1.3.3 | **PCB Analog Electronic** |  | 81d | 2018-09-20 | 2018-12-09 | 30, 32, 63 |  |  | 0d | Lalo | 1640h |  |
| 89 | 1.3.3.1 | Design PCB Layout | manual | 7d | 2018-10-08 | 2018-10-14 | 32, 63 |  |  |  | Lalo | 56h |  |
| 90 | 1.3.3.2 | Create electronic/PCB layout | manual | 9d | 2018-10-20 | 2018-10-28 | 89 |  |  |  | Lalo | 72h |  |
| 91 | 1.3.3.3 | Contact 5 suppliers to manufacture prototype | manual | 31d | 2018-09-20 | 2018-10-20 | 89, 90 |  |  |  | Lalo | 248h |  |
| 92 | 1.3.3.4 | Receive 3 RFQs | manual | 28d | 2018-10-01 | 2018-10-28 | 91 |  |  |  | Lalo | 224h |  |
| 93 | 1.3.3.5 | Perform PO | manual | 28d | 2018-10-22 | 2018-11-18 | 92 |  |  |  | Lalo | 224h |  |
| 94 | 1.3.3.6 | Receive PCB prototype | manual | 7d | 2018-11-19 | 2018-11-25 | 93 |  |  |  | Lalo | 56h |  |
| 95 | 1.3.3.7 | Validate prototype | manual | 14d | 2018-11-26 | 2018-12-09 | 94 |  |  |  | Lalo | 112h |  |
| 96 | 1.4 | **Digital electronics** |  | 133d | 2018-07-30 A | 2018-12-09 |  | 11% | 118.98d | 0d | Gabo | 6638h | 677.05h |
| 97 | 1.4.1 | **Microcontroller Requirements** |  | 21d | 2018-07-30 A | 2018-08-19 | 88 | 67% | 7d | 0d | Gabo | 720h | 495.33h |
| 98 | 1.4.1.1 | Define inputs needed for signal acquisition | manual | 14d | 2018-08-06 A | 2018-08-19 A | 88FF | 100% |  |  | Gabo; Lalo | 220h | 220h |
| 99 | 1.4.1.2 | Define outputs needed for digital potentiometers | manual | 14d | 2018-08-06 A | 2018-08-19 A | 88FF | 100% |  |  | Gabo; Lalo | 220h | 220h |
| 100 | 1.4.1.3 | Decide on communication protocol - MCU & Mobile | manual | 14d | 2018-07-30 | 2018-08-12 |  |  |  |  | All | 112h |  |
| 101 | 1.4.2 | **Programming Signal Acquisition** |  | 37.25d | 2018-08-06 A | 2018-09-12 | 97 | 3% | 36.25d | 0d | Gabo | 654h | 17.54h |
| 102 | 1.4.2.1 | Program signal acquisition in MCU | manual | 6d | 2018-09-06 A | 2018-09-12 | 97FF | 20% | 4.8d |  | Gabo | 48h | 9.6h |
| 103 | 1.4.2.2 | Design and implement signal validation tool | manual | 13d | 2018-08-06 | 2018-08-19 |  |  |  |  | Gabo | 104h |  |
| 104 | 1.4.2.3 | Test signal acquisition by using standard signals | manual | 6d | 2018-08-13 | 2018-08-19 | 103FF |  |  |  | Gabo | 48h |  |
| 105 | 1.4.2.4 | Program signal acquisition using multiplexer | manual | 13d | 2018-08-13 | 2018-08-26 | 104FF |  |  |  | Gabo | 104h |  |
| 106 | 1.4.2.5 | Test signal acquisition by using standard signals | manual | 6.75d | 2018-08-27 | 2018-09-02 | 105FF |  |  |  | Gabo | 54h |  |

Notes:
- 100: 12/08/2018: Bluetooth, since WiFi will be used from the phone to the cloud database.

| ID | WBS | Task | Type | Duration | Start | Finish | Predecessors | Complete | Remaining | Total slack | Resources | Work | Actual work |
| --- | --- | --- | --- | --- | --- | --- | --- | --- | --- | --- | --- | --- | --- |
| 107 | 1.4.3 | **Programming Analog Electronic Configuration** |  | 98d | 2018-09-03 A | 2018-12-09 | 32, 63, 88, 101 | 10% | 87.97d | 0d | Gabo | 1206h | 123.46h |
| 108 | 1.4.3.1 | Set base config. for acquisition of standard signals | manual | 27d | 2018-09-03 A | 2018-09-30 | 101FF | 20% | 21.6d |  | Gabo | 216h | 43.2h |
| 109 | 1.4.3.2 | Test base configuration by using standard signals | manual | 6d | 2018-10-01 | 2018-10-07 | 108FF |  |  |  | Gabo | 48h |  |
| 110 | 1.4.3.3 | Test base config. with electronic from protoboard | manual | 6d | 2018-10-01 | 2018-10-07 | 32FF, 63FF |  |  |  | Gabo | 48h |  |
| 111 | 1.4.3.4 | Test base config. with PCB analog electronic | manual | 13.75d | 2018-11-26 | 2018-12-09 | 88FF |  |  |  | Gabo | 110h |  |
| 112 | 1.4.4 | **Communication MCU - Mobile** |  | 63d | 2018-08-06 A | 2018-10-07 | 32, 63 | 4% | 60.51d | 0d | Gabo | 1030h | 40.73h |
| 113 | 1.4.4.1 | Identify and order communication module | manual | 13d | 2018-08-06 A | 2018-08-19 |  | 20% | 10.4d |  | Gabo | 104h | 20.8h |
| 114 | 1.4.4.2 | Program communication between MCU & Mobile | manual | 20d | 2018-08-13 | 2018-09-02 | 113FF |  |  |  | Gabo | 160h |  |
| 115 | 1.4.4.3 | Test communication by sending dummy sequences | manual | 13d | 2018-09-03 | 2018-09-16 | 114FF |  |  |  | Gabo | 104h |  |
| 116 | 1.4.4.4 | Test communication by sending known signal | manual | 13d | 2018-09-03 | 2018-09-16 | 114FF |  |  |  | Gabo | 104h |  |
| 117 | 1.4.4.5 | Test communication by sending biosignals | manual | 6.75d | 2018-10-01 | 2018-10-07 | 32FF, 63FF |  |  |  | Gabo | 54h |  |
| 118 | 1.4.5 | **PCB Final Hardware** |  | 98d | 2018-09-03 | 2018-12-09 | 112, 107, 101, 97 |  |  | 0d | Gabo | 1966h |  |
| 119 | 1.4.5.1 | Select MCU that covers requirements | manual | 13d | 2018-09-03 | 2018-09-16 | 112FF, 107FF, 101FF, 97FF |  |  |  | Gabo | 104h |  |
| 120 | 1.4.5.2 | Design PCB layout with analog electronics | manual | 34d | 2018-09-10 | 2018-10-14 | 112FF, 107FF, 101FF, 97FF |  |  |  | Gabo | 272h |  |
| 121 | 1.4.5.3 | Contact 5 suppliers to manufacture prototype | manual | 27d | 2018-09-03 | 2018-09-30 | 120FF |  |  |  | Gabo | 216h |  |
| 122 | 1.4.5.4 | Receive 3 RFQs | manual | 27d | 2018-10-01 | 2018-10-28 | 121FF |  |  |  | Gabo | 216h |  |
| 123 | 1.4.5.5 | Perform PO | manual | 27d | 2018-10-22 | 2018-11-18 | 122 |  |  |  | Gabo | 216h |  |
| 124 | 1.4.5.6 | Receive PCB prototype | manual | 7d | 2018-11-19 | 2018-11-26 | 123 |  |  |  | Gabo | 56h |  |
| 125 | 1.4.5.7 | Validate prototype | manual | 12.75d | 2018-11-27 | 2018-12-09 | 124 |  |  |  | Gabo | 102h |  |
| 126 | 1.5 | **Cloud application** |  | 164d | 2018-08-01 A | 2019-01-11 |  | 30% | 115.59d | 0d | Diego; Jorge | 29272h | 8285.75h |
| 127 | 1.5.1 | **Design Application Layout** |  | 33d | 2018-08-01 A | 2018-09-02 A |  | 100% |  |  | Diego; Jorge | 4124h | 4124h |
| 128 | 1.5.1.1 | Create interface for display data | manual | 32d | 2018-08-01 A | 2018-09-02 A |  | 100% |  |  | Diego; Jorge | 512h | 512h |
| 129 | 1.5.1.2 | Main Menu Layout | manual | 32d | 2018-08-01 A | 2018-09-02 A |  | 100% |  |  | Diego; Jorge | 512h | 512h |
| 130 | 1.5.1.3 | Authentification Layout | manual | 32d | 2018-08-01 A | 2018-09-02 A |  | 100% |  |  | Diego; Jorge | 512h | 512h |
| 131 | 1.5.1.4 | Biosignal Display Layout | manual | 32d | 2018-08-01 A | 2018-09-02 A |  | 100% |  |  | Diego; Jorge | 512h | 512h |
| 132 | 1.5.1.5 | MCU Display Layout | manual | 32d | 2018-08-01 A | 2018-09-02 A |  | 100% |  |  | Diego; Jorge | 512h | 512h |
| 133 | 1.5.1.6 | Patient/User Info Display Layout | manual | 32d | 2018-08-01 A | 2018-09-02 A |  | 100% |  |  | Diego; Jorge | 512h | 512h |
| 134 | 1.5.1.7 | Storage/Cloud Access Display Layout | manual | 32.75d | 2018-08-01 A | 2018-09-02 A |  | 100% |  |  | Diego; Jorge | 524h | 524h |

| ID | WBS | Task | Type | Duration | Start | Finish | Predecessors | Complete | Remaining | Total slack | Resources | Work | Actual work |
| --- | --- | --- | --- | --- | --- | --- | --- | --- | --- | --- | --- | --- | --- |
| 135 | 1.5.2 | **Software Configuration** |  | 117d | 2018-08-01 A | 2018-11-25 |  | 28% | 84.1d | 0d | Diego; Jorge | 11020h | 3099.04h |
| 136 | 1.5.2.1 | Choose programming language | manual | 39d | 2018-08-01 A | 2018-09-09 A |  | 100% |  |  | Diego; Jorge | 624h | 624h |
| 137 | 1.5.2.2 | Data Display Code | manual | 76d | 2018-09-10 A | 2018-11-25 |  | 30% | 53.2d |  | Diego; Jorge | 1216h | 364.8h |
| 138 | 1.5.2.3 | Main Menu Code | manual | 76d | 2018-09-10 A | 2018-11-25 |  | 30% | 53.2d |  | Diego; Jorge | 1216h | 364.8h |
| 139 | 1.5.2.4 | Authentification Code | manual | 76d | 2018-09-10 A | 2018-11-25 |  | 75% | 19d |  | Diego; Jorge | 1216h | 912h |
| 140 | 1.5.2.5 | Biosignal Display Code | manual | 76d | 2018-09-10 | 2018-11-25 |  |  |  |  | Diego; Jorge | 1216h |  |
| 141 | 1.5.2.6 | MCU Display Code | manual | 76d | 2018-09-10 | 2018-11-25 |  |  |  |  | Diego; Jorge | 1216h |  |
| 142 | 1.5.2.7 | Patient/User Info Display Code | manual | 76d | 2018-09-10 | 2018-11-25 |  |  |  |  | Diego; Jorge | 1216h |  |
| 143 | 1.5.2.8 | Storage/Cloud Access Display Code | manual | 76.75d | 2018-09-10 A | 2018-11-25 |  | 25% | 57.56d |  | Diego; Jorge | 1228h | 307h |
| 144 | 1.5.3 | **Hardware Configuration** |  | 63d | 2018-09-24 | 2018-11-25 | 112, 32, 63 |  |  | 0d | Diego; Jorge | 4572h |  |
| 145 | 1.5.3.1 | Test Bluetooth connection (Send) | manual | 62d | 2018-09-24 | 2018-11-25 | 112FF |  |  |  | Diego; Jorge | 992h |  |
| 146 | 1.5.3.2 | Test Bluetooth connection (Receive) | manual | 62d | 2018-09-24 | 2018-11-25 | 112FF |  |  |  | Diego; Jorge | 992h |  |
| 147 | 1.5.3.3 | Test config with protoboard and known signals | manual | 49d | 2018-10-07 | 2018-11-25 | 112FF |  |  |  | Diego; Jorge | 784h |  |
| 148 | 1.5.3.4 | Test config with protoboard and biosignals | manual | 49.75d | 2018-10-07 | 2018-11-25 | 32FF, 63FF |  |  |  | Diego; Jorge | 796h |  |
| 149 | 1.5.4 | **Signal Processing** |  | 50d | 2018-10-07 | 2018-11-25 | 144, 135 |  |  | 0d | Diego; Jorge | 3164h |  |
| 150 | 1.5.4.1 | Amplifications | manual | 49d | 2018-10-07 | 2018-11-25 | 144FF, 135FF |  |  |  | Diego; Jorge | 784h |  |
| 151 | 1.5.4.2 | Filters | manual | 49d | 2018-10-07 | 2018-11-25 | 144FF, 135FF |  |  |  | Diego; Jorge | 784h |  |
| 152 | 1.5.4.3 | Signal Conditioning (Rect, Prom, Offset, etc) | manual | 49.75d | 2018-10-07 | 2018-11-25 | 144FF, 135FF |  |  |  | Diego; Jorge | 796h |  |
| 153 | 1.5.5 | **Outsource App and Web design** |  | 97d | 2018-10-07 | 2019-01-11 | 127, 135, 144, 149 |  |  | 0d | Diego; Jorge | 3776h |  |
| 154 | 1.5.5.1 | Optimize application design | manual | 64d | 2018-10-07 | 2018-12-09 | 127FF |  |  |  | Diego; Jorge | 1024h |  |
| 155 | 1.5.5.2 | Contact 5 suppliers to design the application | manual | 15d | 2018-11-01 | 2018-11-16 | 127SF, 135SF, 144SF, 149SF |  |  |  | Diego; Jorge | 240h |  |
| 156 | 1.5.5.3 | Receive 3 RFQs | manual | 18d | 2018-11-05 | 2018-11-23 | 155 |  |  |  | Diego; Jorge | 288h |  |
| 157 | 1.5.5.4 | Perform PO | manual | 4d | 2018-11-26 | 2018-11-30 | 156 |  |  |  | Diego; Jorge | 64h |  |
| 158 | 1.5.5.5 | Receive application | manual | 33d | 2018-12-03 | 2019-01-04 |  |  |  |  | Diego; Jorge | 528h |  |
| 159 | 1.5.5.6 | Validate application | manual | 5d | 2019-01-07 | 2019-01-11 |  |  |  |  | Diego; Jorge | 80h |  |

Notes:
- 136: Java + Android Studio
- 139: 23.09.: Se probó con un registro y funcionó. / Falta hacerlo con más registro, más general.
- 143: 23.09.: Almacenamiento local se guarda en el celular. / Clarificar con la cloud database

| ID | WBS | Task | Type | Duration | Start | Finish | Total slack |
| --- | --- | --- | --- | --- | --- | --- | --- |
| 160 | 2 | **Administrative** |  | 1d? | 2018-06-24 | 2018-06-24 |  |
| 161 | 2.1 | **Business Plan** |  | 1d? | 2018-06-24 | 2018-06-24 |  |
| 162 | 2.1.1 | **Company Profile** |  | 1d? | 2018-06-24 | 2018-06-24 |  |
| 163 | 2.1.1.1 | Create company's description | manual | 1d? | 2018-06-24 | 2018-06-24 |  |
| 164 | 2.1.1.2 | Generate profile of company's members | manual | 1d? | 2018-06-24 | 2018-06-24 |  |
| 165 | 2.1.1.3 | Describe products and services | manual | 1d? | 2018-06-24 | 2018-06-24 |  |
| 166 | 2.1.2 | **Market Research** |  | 1d? | 2018-06-24 | 2018-06-24 |  |
| 167 | 2.1.2.1 | Evaluate market size and expected growth for electronic medical devices | manual | 1d? | 2018-06-24 | 2018-06-24 |  |
| 168 | 2.1.2.2 | Evaluate market size and expected growth for eHealth | manual | 1d? | 2018-06-24 | 2018-06-24 |  |
| 169 | 2.1.2.3 | Evaluate market size and expected growth for development microcontroller platforms | manual | 1d? | 2018-06-24 | 2018-06-24 |  |
| 170 | 2.1.2.4 | Analyze main competitors | manual | 1d? | 2018-06-24 | 2018-06-24 |  |
| 171 | 2.1.3 | **Strategy and Implementation** |  | 1d? | 2018-06-24 | 2018-06-24 |  |
| 172 | 2.1.3.1 | Define marketing plan to promote the business and enter the market | manual | 1d? | 2018-06-24 | 2018-06-24 |  |
| 173 | 2.1.3.2 | Evaluate impact of Hackathon with prototype | manual | 1d? | 2018-06-24 | 2018-06-24 |  |
| 174 | 2.1.3.3 | Make feasibility analysis for crowdfunding campaign | manual | 1d? | 2018-06-24 | 2018-06-24 |  |
| 175 | 2.1.3.4 | Describe pricing, promotion, distribution and logistics | manual | 1d? | 2018-06-24 | 2018-06-24 |  |
| 176 | 2.1.4 | **Financial Analysis** |  | 1d? | 2018-06-24 | 2018-06-24 |  |
| 177 | 2.1.4.1 | Create historical financial data: income statements, balance sheets and cash flow statements | manual | 1d? | 2018-06-24 | 2018-06-24 |  |
| 178 | 2.1.4.2 | Estimate financial situation for the company's first 5 years | manual | 1d | 2018-06-24 | 2018-06-24 |  |
| 179 | 2.2 | **Company** |  | 1d? | 2018-06-24 | 2018-06-24 |  |
| 180 | 2.2.1 | **Foundation** |  | 0.75d | 2018-06-24 | 2018-06-24 | 0d |
| 181 | 2.2.1.1 | Investigate requirements for UG and GmbH foundation | manual | 1d | 2018-06-24 | 2018-06-24 |  |
| 182 | 2.2.1.2 | Investigate requirements for S.A. de C.V. foundation | manual | 1d | 2018-06-24 | 2018-06-24 |  |
| 183 | 2.2.1.3 | Investigate collaboration or synergy between S.A. de C.V. and UG/GmbH | manual | 1d | 2018-06-24 | 2018-06-24 |  |
| 184 | 2.2.1.4 | Found UG or GmbH | manual | 1d | 2018-06-24 | 2018-06-24 |  |
| 185 | 2.2.1.5 | Found S.A. de C.V. (if needed) | manual | 1d | 2018-06-24 | 2018-06-24 |  |

| ID | WBS | Task | Type | Duration | Start | Finish | Total slack |
| --- | --- | --- | --- | --- | --- | --- | --- |
| 186 | 2.2.2 | **Tax Consulting** |  | 0.75d | 2018-06-24 | 2018-06-24 | 0d |
| 187 | 2.2.2.1 | Receive 3 RFQs from tax consultants in Germany | manual | 1d | 2018-06-24 | 2018-06-24 |  |
| 188 | 2.2.2.2 | Hire tax consultant in Germany | manual | 1d | 2018-06-24 | 2018-06-24 |  |
| 189 | 2.2.2.3 | Receive 3 RFQs from tax consultants in Mexico (if needed) | manual | 1d | 2018-06-24 | 2018-06-24 |  |
| 190 | 2.2.2.4 | Hire tax consultant in Mexico (if needed) | manual | 1d | 2018-06-24 | 2018-06-24 |  |
| 191 | 2.2.3 | **Accounting Tool** |  | 0.75d | 2018-06-24 | 2018-06-24 | 0d |
| 192 | 2.2.3.1 | Investigate accounting tools | manual | 1d | 2018-06-24 | 2018-06-24 |  |
| 193 | 2.2.3.2 | Define accounting tool to be used | manual | 1d | 2018-06-24 | 2018-06-24 |  |
| 194 | 2.2.4 | **HR Tool** |  | 0.75d | 2018-06-24 | 2018-06-24 | 0d |
| 195 | 2.2.4.1 | Define tool to be used for company's email (e.g., tool to connect external email to email account) | manual | 1d | 2018-06-24 | 2018-06-24 |  |
| 196 | 2.2.5 | **Website** |  | 0.75d | 2018-06-24 | 2018-06-24 | 0d |
| 197 | 2.2.5.1 | Receive 3 RFQs to outsource website | manual | 1d | 2018-06-24 | 2018-06-24 |  |
| 198 | 2.2.5.2 | Outsource website design (Front End) | manual | 1d | 2018-06-24 | 2018-06-24 |  |
| 199 | 2.2.5.3 | Generate initial emails with company's website | manual | 1d | 2018-06-24 | 2018-06-24 |  |
| 200 | 2.2.5.4 | Integrate Web Solution to company's website (Front End) | manual | 1d | 2018-06-24 | 2018-06-24 |  |
| 201 | 2.3 | **Funding** |  | 1d? | 2018-06-24 | 2018-06-24 |  |
| 202 | 2.3.1 | Horizon 2020 | manual | 1d? | 2018-06-24 | 2018-06-24 |  |
| 203 | 2.3.2 | Funding Programs: EU | manual | 1d? | 2018-06-24 | 2018-06-24 |  |
| 204 | 2.3.3 | Funding Programs: Germany | manual | 1d | 2018-06-24 | 2018-06-24 |  |
| 205 | 2.3.4 | Funding Programs: Mexico | manual | 1d | 2018-06-24 | 2018-06-24 |  |
| 206 | 2.3.5 | Funding Programs: Jalisco | manual | 1d? | 2018-06-24 | 2018-06-24 |  |
| 207 | 2.3.6 | Crowdfunding | manual | 1d? | 2018-06-24 | 2018-06-24 |  |
| 208 | 2.4 | **IP** |  | 1d? | 2018-06-24 | 2018-06-24 |  |
| 209 | 2.4.1 | General Information | manual | 1d? | 2018-06-24 | 2018-06-24 |  |
| 210 | 2.4.2 | International Patent | manual | 1d? | 2018-06-24 | 2018-06-24 |  |
| 211 | 2.4.3 | European Patent | manual | 1d? | 2018-06-24 | 2018-06-24 |  |
| 212 | 2.4.4 | US Patent | manual | 1d? | 2018-06-24 | 2018-06-24 |  |
